# Simple Project Plan

Schedule from MS Project, 2020-06-15 to 2020-11-11.

## Calendars

- Standard: Mon-Fri 08:00-12:00, 13:00-17:00; Sat-Sun off.

## Resources

| Resource |
| --- |
| l李泽康 |
| 李泽康 |
| 王晋锋 |
| 耿梦岩 |
| 次生旺 |
| 王明慧 |
| 吴向明 |

## Schedule

| ID | WBS | Task | Type | Duration | Start | Finish | Predecessors | Total slack | Resources | Work |
| --- | --- | --- | --- | --- | --- | --- | --- | --- | --- | --- |
| 1 | 1 | **1 先启阶段** |  | 10d | 2020-06-15 | 2020-06-26 |  |  |  | 160h |
| 2 | 1.1 | **1.1 项目管理** |  | 2d | 2020-06-15 | 2020-06-16 |  |  |  | 16h |
| 3 | 1.1.1 | 1.1.1 制定项目计划 |  | 1d | 2020-06-15 | 2020-06-15 |  | 0d | 李泽康 | 8h |
| 4 | 1.1.2 | 1.1.2 同行评审 |  | 1d | 2020-06-16 | 2020-06-16 | 3 | 0d | 吴向明 | 8h |
| 5 | 1.2 | **1.2 配置管理** |  | 3d | 2020-06-17 | 2020-06-19 |  |  |  | 16h |
| 6 | 1.2.1 | 1.2.1 制定配置计划 |  | 1d | 2020-06-17 | 2020-06-17 | 4 | 0d | 李泽康 [50%]; 次生旺 [50%] | 8h |
| 7 | 1.2.2 | 1.2.2 搭建配置环境 |  | 1d | 2020-06-18 | 2020-06-18 | 6 | 0d | 次生旺 | 8h |
| 8 | 1.3 | **1.3 需求开发** |  | 2d | 2020-06-19 | 2020-06-22 | 7 |  |  | 40h |
| 9 | 1.3.1 | 1.3.1 用例建模 |  | 1d | 2020-06-19 | 2020-06-19 |  | 0d | 耿梦岩; 王明慧 | 16h |
| 10 | 1.3.2 | 1.3.2 用例分析 |  | 1d | 2020-06-22 | 2020-06-22 | 9 | 0d | 耿梦岩; 王晋锋; 王明慧 | 24h |
| 11 | 1.4 | **1.4 测试计划** |  | 2d | 2020-06-22 | 2020-06-23 |  |  |  | 32h |
| 12 | 1.4.1 | 1.4.1 制定测试计划 | manual | 1d | 2020-06-22 | 2020-06-22 |  |  | 耿梦岩; 王晋锋 | 16h |
| 13 | 1.4.2 | 1.4.2 系统测试用例设计 | manual | 1d | 2020-06-23 | 2020-06-23 |  |  | 耿梦岩; 王晋锋 | 16h |
| 14 | 1.5 | 1.5 PPQA | manual | 1d | 2020-06-24 | 2020-06-24 |  |  | 次生旺 | 8h |
| 15 | 1.6 | **1.6 阶段评审** |  | 2d | 2020-06-25 | 2020-06-26 |  |  |  | 48h |
| 16 | 1.6.1 | 1.5.1 先启配置状态审计 | manual | 3d | 2020-06-24 | 2020-06-26 |  |  | 次生旺; 李泽康 | 48h |
| 17 | 2 | **2 精化阶段** |  | 10d | 2020-06-26 | 2020-07-09 |  |  |  | 192h |
| 18 | 2.1 | 2.1 设计界面 | manual | 2d | 2020-06-26 | 2020-06-29 |  |  | 次生旺; 王明慧 | 32h |
| 19 | 2.2 | **2.2 OOAD** |  | 5d | 2020-06-29 | 2020-07-03 |  |  |  | 112h |
| 20 | 2.2.1 | 2.2.1 分析模型 | manual | 1d | 2020-07-02 | 2020-07-02 |  |  | 耿梦岩; 王明慧 | 16h |
| 21 | 2.2.2 | 2.2.2 设计模型 | manual | 1d | 2020-07-02 | 2020-07-02 |  |  | 耿梦岩; 王晋锋; 王明慧 | 24h |
| 22 | 2.2.3 | 2.2.3 数据建模与数据库设计 | manual | 1d | 2020-07-02 | 2020-07-02 |  |  | 次生旺; 李泽康; 王晋锋 | 24h |
| 23 | 2.2.4 | 2.2.4 集成测试用例设计 | manual | 2d | 2020-07-02 | 2020-07-03 |  |  | 王晋锋; 王明慧; 耿梦岩 | 48h |
| 24 | 2.3 | **4.5 阶段评审** |  | 5d | 2020-07-03 | 2020-07-09 |  |  |  | 48h |
| 25 | 2.3.1 | 4.5.1 精化配置状态审计 | manual | 2d | 2020-07-07 | 2020-07-08 |  |  | 次生旺; 李泽康 | 32h |
| 26 | 2.3.2 | 4.5.2 评审设计工件 | manual | 2d | 2020-07-08 | 2020-07-09 |  |  | 吴向明 | 16h |

Notes:
- 1: 这是摘要任务。使用摘要任务以帮助您在节中组织项目。
- 4: 这是里程碑任务。将任务工期设置为 0d 以标记项目中的事件。

| ID | WBS | Task | Type | Duration | Start | Finish | Resources | Work |
| --- | --- | --- | --- | --- | --- | --- | --- | --- |
| 27 | 3 | **3 构建阶段** |  | 80d | 2020-07-09 | 2020-10-28 |  | 2480h |
| 28 | 3.1 | 3.1 单元编码 | manual | 40d | 2020-07-09 | 2020-09-02 | 次生旺; 耿梦岩; 李泽康; 王晋锋; 王明慧 | 1600h |
| 29 | 3.2 | 3.2 系统集成 | manual | 10d | 2020-09-03 | 2020-09-16 | 李泽康; 王晋锋 | 160h |
| 30 | 3.3 | 3.3 集成测试 | manual | 10d | 2020-09-17 | 2020-09-30 | 李泽康; 王晋锋 | 160h |
| 31 | 3.4 | **3.4 阶段评审** |  | 20d | 2020-10-01 | 2020-10-28 |  | 560h |
| 32 | 3.4.1 | 3.4.1 构建配置状态审计 | manual | 8d | 2020-10-01 | 2020-10-12 | 次生旺; 李泽康 | 128h |
| 33 | 3.4.2 | 3.4.2 评审构建工件 | manual | 6d | 2020-10-12 | 2020-10-19 | 吴向明 | 48h |
| 34 | 3.4.3 | 3.4.3 发布构建基线 | manual | 8d | 2020-10-19 | 2020-10-28 | 次生旺; 耿梦岩; 李泽康; 王晋锋; 王明慧; 吴向明 | 384h |
| 35 | 4 | **4 产品化** |  | 10d | 2020-10-29 | 2020-11-11 |  | 232h |
| 36 | 4.1 | **4.1 产品发布** |  | 5d | 2020-10-29 | 2020-11-04 |  | 120h |
| 37 | 4.1.1 | 4.1.1 编写产品说明书 | manual | 5d | 2020-10-29 | 2020-11-04 | 耿梦岩; 李泽康; 王明慧 | 120h |
| 38 | 4.2 | **4.2 产品部署** |  | 5d | 2020-11-05 | 2020-11-11 |  | 104h |
| 39 | 4.2.1 | 4.2.1 搭建环境 | manual | 1d | 2020-11-05 | 2020-11-05 | 次生旺; 李泽康 | 16h |
| 40 | 4.2.2 | 4.2.2 运行产品 | manual | 1d | 2020-11-06 | 2020-11-06 | 次生旺; 耿梦岩; 李泽康; 王晋锋; 王明慧 | 40h |
| 41 | 4.2.3 | 4.2.3 产品测试 | manual | 3d | 2020-10-07 | 2020-10-09 | 耿梦岩; 王晋锋 | 48h |
| 42 | 4.3 | **4.3 阶段评审暨结项** |  | 2d | 2020-11-10 | 2020-11-11 |  | 8h |
| 43 | 4.3.1 | 4.3.1 产品评审 | manual | 1d | 2020-11-11 | 2020-11-11 | 吴向明 | 8h |
